# roadmap

Schedule from MS Project, 2007-05-14 to 2007-10-13.
mw

## Calendars

- Standard: Mon-Fri 08:00-12:00, 13:00-17:00; Sat-Sun off. Exceptions (off unless hours are given): 2007-06-16 08:00-12:00, 13:00-17:00, 2007-10-13 08:00-12:00, 13:00-17:00.

## Schedule

| ID | WBS | Task | Type | Duration | Start | Finish | Predecessors | Total slack | Free slack | Constraint |
| --- | --- | --- | --- | --- | --- | --- | --- | --- | --- | --- |
| 1 | 1 | **Vorarbeiten** |  | 26d | 2007-05-14 | 2007-06-18 |  | 80d | 5d |  |
| 2 | 1.1 | Abgabe Draft Version Disposition | milestone | 0d | 2007-06-11 | 2007-06-11 |  | 90d |  | finish no earlier than 2007-06-11 |
| 3 | 1.2 | Disposition erstellen |  | 21d | 2007-05-14 | 2007-06-11 |  | 88d | 2d | start no earlier than 2007-05-14 |
| 4 | 1.3 | Präsentation erstellen |  | 2d | 2007-06-14 | 2007-06-15 | 3 | 81d |  | finish no earlier than 2007-06-15 |
| 5 | 1.4 | Präsentation Disposition | milestone | 0d | 2007-06-16 | 2007-06-16 |  | 85d |  | finish no earlier than 2007-06-16 |
| 6 | 1.5 | Abgabe Masterarbeitsblatt | milestone | 0d | 2007-06-18 | 2007-06-18 |  | 85d |  | start no earlier than 2007-06-18 |
| 7 | 2 | **Masterarbeit** |  | 80d | 2007-06-25 | 2007-10-13 | 1 | 0d |  |  |
| 8 | 2.1 | Beginn Masterarbeit | milestone | 0d | 2007-06-25 | 2007-06-25 |  | 75d | 0d | start no earlier than 2007-06-25 |
| 9 | 2.2 | Erarbeiten des Fragenkatalogs |  | 5d | 2007-06-25 | 2007-06-29 | 8 | 75d |  |  |
| 10 | 2.3 | Erarbeiten der Einladung an der Umfrage |  | 1d | 2007-06-25 | 2007-06-25 | 8 | 79d |  |  |
| 11 | 2.4 | Start der Umfrage | milestone | 0d | 2007-07-09 | 2007-07-09 |  | 70d |  | start no earlier than 2007-07-09 |
| 12 | 2.5 | Abgabe Masterarbeit | milestone | 0d | 2007-10-13 | 2007-10-13 |  | 0d |  | start no earlier than 2007-10-13 |
| 13 | 2.6 | Kapitel 1 | milestone | 0d | 2007-08-06 | 2007-08-06 |  | 50d |  | start no earlier than 2007-08-06 |
| 14 | 2.7 | Kapitel 2 | milestone | 0d | 2007-08-20 | 2007-08-20 |  | 40d |  | start no earlier than 2007-08-20 |
| 15 | 2.8 | Kapitel 3 | milestone | 0d | 2007-09-03 | 2007-09-03 |  | 30d |  | start no earlier than 2007-09-03 |
